# Local road

Schedule from MS Project, 2021-11-15 to 2022-03-30, costs in $.

## Calendars

- Standard: Mon-Fri 08:00-12:00, 13:00-17:00; Sat-Sun off.

## Resources

| Resource | Group | Unit | Rate |
| --- | --- | --- | --- |
| Labour1 | Labour |  | 70 |
| Material1 | Material | Ton | 50 |
| Equipment1 | Equipment |  | 300 |

## Schedule

| ID | WBS | Task | Duration | Start | Finish | Predecessors | Total slack | Free slack | Resources | Work | Cost |
| --- | --- | --- | --- | --- | --- | --- | --- | --- | --- | --- | --- |
| 1 | 1 | **Site Grading** | 25d | 2021-11-15 | 2021-12-17 |  | 23d |  |  | 2000h | 370,000 |
| 2 | 1.1 | WB - Excavation | 20d | 2021-11-15 | 2021-12-10 |  | 26d |  | Equipment1 [500%]; Labour1 [500%] | 1600h | 296,000 |
| 3 | 1.2 | EB - Excavation | 5d | 2021-12-13 | 2021-12-17 |  | 23d | 0d | Equipment1 [500%]; Labour1 [500%] | 400h | 74,000 |
| 4 | 2 | **Site Drainage** | 46d | 2021-11-15 | 2022-01-17 |  | 0d |  |  | 3680h | 689,300 |
| 5 | 2.1 | Temp. Diaphgram- Contruct | 10d | 2021-11-15 | 2021-11-26 |  | 0d |  | Equipment1 [500%]; Labour1 [500%]; Material1 [20 Ton] | 800h | 149,000 |
| 6 | 2.2 | Culvert - Excavation | 18d | 2021-11-29 | 2021-12-22 | 5 | 0d |  | Equipment1 [500%]; Labour1 [500%] | 1440h | 266,400 |
| 7 | 2.3 | Culvert - Procure liner | 20d | 2021-11-15 | 2021-12-10 |  | 8d |  | Material1 [50 Ton] |  | 2,500 |
| 8 | 2.4 | Culvert - Liner install | 3d | 2021-12-23 | 2021-12-27 | 5, 6, 7 | 0d |  | Equipment1 [500%]; Labour1 [500%] | 240h | 44,400 |
| 9 | 2.5 | Culvert - Selected b/fill | 10d | 2021-12-28 | 2022-01-10 | 8 | 0d |  | Equipment1 [500%]; Labour1 [500%]; Material1 [100 Ton] | 800h | 153,000 |
| 10 | 2.6 | Temp. Diaphgram- Remove | 5d | 2022-01-11 | 2022-01-17 | 9 | 0d |  | Equipment1 [500%]; Labour1 [500%] | 400h | 74,000 |
| 11 | 3 | **Roadway** | 73d | 2021-12-20 | 2022-03-30 |  | 0d |  |  | 4800h | 901,000 |
| 12 | 3.1 | WB - Structure | 10d | 2022-01-18 | 2022-01-31 | 10, 2 | 0d |  | Equipment1 [500%]; Labour1 [500%]; Material1 [100 Ton] | 800h | 153,000 |
| 13 | 3.2 | EB - Structure | 8d | 2021-12-20 | 2021-12-29 | 3 | 23d |  | Equipment1 [500%]; Labour1 [500%]; Material1 [50 Ton] | 640h | 120,900 |
| 14 | 3.3 | Paving | 30d | 2022-02-01 | 2022-03-14 | 12, 13 | 0d |  | Equipment1 [500%]; Labour1 [500%]; Material1 [80 Ton] | 2400h | 448,000 |
| 15 | 3.4 | Barriers and kerbs | 10d | 2022-03-15 | 2022-03-28 | 14 | 0d |  | Equipment1 [500%]; Labour1 [500%]; Material1 [20 Ton] | 800h | 149,000 |
| 16 | 3.5 | Signals | 2d | 2022-03-29 | 2022-03-30 | 15 | 0d |  | Equipment1 [500%]; Labour1 [500%]; Material1 [10 Ton] | 160h | 30,100 |
