# 2018-PMTermProject_MSProjectExample

Schedule from MS Project, 2018-10-15 to 2018-10-31, costs in €.

## Calendars

- Standard: Mon-Fri 08:00-12:00, 13:00-17:00; Sat-Sun off.

## Resources

| Resource | Rate |
| --- | --- |
| Adriano | 20 |
| Mary | 50 |
| John | 5 |
| Venue | 500 |
| DJ | 150 |
| Food & drinks | 750 |
| Decorations | 250 |

## Schedule

| ID | WBS | Task | Type | Duration | Start | Finish | Predecessors | Total slack | Free slack | Constraint | Resources | Work | Cost |
| --- | --- | --- | --- | --- | --- | --- | --- | --- | --- | --- | --- | --- | --- |
| 1 | 1 | **Halloween Party** |  | 12.5d | 2018-10-15 09:00 | 2018-10-31 14:00 |  | 0d |  |  |  | 52h | 2,810 |
| 2 | 1.1 | Project start | milestone | 0d | 2018-10-15 09:00 | 2018-10-15 09:00 |  | 9d | 0d |  |  |  |  |
| 3 | 1.2 | **Book venue** |  | 3d | 2018-10-15 09:00 | 2018-10-18 09:00 |  | 9d |  |  |  | 21h | 920 |
| 4 | 1.2.1 | Select potential venues |  | 4h | 2018-10-15 09:00 | 2018-10-15 14:00 | 2 | 9d | 0d |  | Adriano | 4h | 80 |
| 5 | 1.2.2 | Visit venues |  | 2d | 2018-10-15 14:00 | 2018-10-17 14:00 | 4 | 9d | 0d |  | Adriano | 16h | 320 |
| 6 | 1.2.3 | Book |  | 1h | 2018-10-18 08:00 | 2018-10-18 09:00 | 5 | 9d | 0d |  | Adriano; Venue | 1h | 520 |
| 7 | 1.3 | Buy food & drinks |  | 8h | 2018-10-15 09:00 | 2018-10-16 09:00 | 2 | 11d | 2d |  | Mary [50%] | 4h | 200 |
| 8 | 1.4 | Buy decorations |  | 2d | 2018-10-15 09:00 | 2018-10-17 09:00 | 2 | 10d | 1d |  | Mary [50%] | 8h | 400 |
| 9 | 1.5 | **Invite guests** |  | 0.75d | 2018-10-15 09:00 | 2018-10-15 16:00 |  | 11.25d |  |  |  | 6h | 30 |
| 10 | 1.5.1 | Prepare guestlist |  | 4h | 2018-10-15 09:00 | 2018-10-15 14:00 | 2 | 11.25d | 0d |  | John | 4h | 20 |
| 11 | 1.5.2 | Send invites |  | 2h | 2018-10-15 14:00 | 2018-10-15 16:00 | 10 | 11.25d | 2.25d |  | John | 2h | 10 |
| 12 | 1.6 | Arrange transportation |  | 3h | 2018-10-17 14:00 | 2018-10-17 17:00 | 2 | 9.12d | 0.12d |  | Adriano | 3h | 60 |
| 13 | 1.7 | Book DJ |  | 2h | 2018-10-15 09:00 | 2018-10-15 11:00 | 2 | 11.75d | 2.75d |  | John | 2h | 10 |
| 14 | 1.8 | Preparation finished | milestone | 0d | 2018-10-18 09:00 | 2018-10-18 09:00 | 6, 7, 8, 11, 12, 13 | 9d |  |  |  |  |  |
| 15 | 1.9 | Party Day | milestone | 0d | 2018-10-31 09:00 | 2018-10-31 09:00 | 14 | 0d |  | must start on 2018-10-31 09:00 |  |  |  |
| 16 | 1.10 | **Prepare venue** |  | 0.5d | 2018-10-31 09:00 | 2018-10-31 14:00 |  | 0d |  |  |  | 8h | 1,190 |
| 17 | 1.10.1 | Arrange decorations |  | 4h | 2018-10-31 09:00 | 2018-10-31 14:00 | 8, 6, 14, 15 | 0d |  |  | John; Decorations | 4h | 270 |
| 18 | 1.10.2 | Set up food & drinks |  | 2h | 2018-10-31 09:00 | 2018-10-31 11:00 | 7, 6, 14, 15 | 0.25d |  |  | John; Food & drinks | 2h | 760 |
| 19 | 1.10.3 | Set up DJ booth |  | 2h | 2018-10-31 09:00 | 2018-10-31 11:00 | 13, 6, 14, 15 | 0.25d |  |  | John; DJ | 2h | 160 |
